# Virtualni popotnik

Schedule from MS Project, 2015-03-16 to 2015-03-16, costs in €.

## Calendars

- Standard: Mon-Fri 08:00-12:00, 13:00-17:00; Sat-Sun off.

## Resources

| Resource | Rate |
| --- | --- |
| Vodja projekta | 12 |
| Tajnica | 5.5 |
| Vzdrževalec | 7 |
| Vodja delovne skupine 1 | 10 |
| Vodja delovne skupine 2 | 10 |
| Vodja delovne skupine 3 | 10 |
| Vodja delovne skupine 4 | 10 |
| Načrtovalec 1 | 8.5 |
| Načrtovalec 2 | 8.5 |
| Načrtovalec sistema | 8.5 |
| Načrtovalec 3 | 8.5 |
| Grafični oblikovalec 1 | 9 |
| Grafični oblikovalec 2 | 9 |
| Grafični oblikovalec 3 | 9 |
| Programer 1 | 8 |
| Programer 2 | 8 |
| Programer 3 | 8 |
| Programer 4 | 8 |
| Programer 5 | 8 |
| Programer 6 | 8 |
| Programer 7 | 8 |
| Programer 8 | 8 |
| Programer 9 | 8 |
| Programer 10 | 8 |
| Tester 1 | 7.5 |
| Tester 2 | 7.5 |
| Tester 3 | 7.5 |
| Tester 4 | 7.5 |
| Tester 5 | 7.5 |
| Tester 6 | 7.5 |
| Oblikovalec podatkovne baze | 9 |
| Mehatronik 1 | 8 |
| Mehatronik 2 | 8 |
| Elektronik 1 | 9.2 |
| Elektronik 2 | 9.2 |
| Daljinski upravljalnik | 300 |
| Paket senzorjev | 150 |
| 360° kamera | 300 |
| Delovna postaja | 1200 |
| Strežnik | 1800 |
| Brezpilotno zračno plovilo | 1500 |
| Pisarniški material | 200 |
| Tehnični material | 50 |
| Zakuska | 200 |

## Schedule

| ID | WBS | Task | Type | Duration | Start | Finish | Total slack | Resources | Work | Cost |
| --- | --- | --- | --- | --- | --- | --- | --- | --- | --- | --- |
| 1 | 1 | Začetni sestanek s stranko |  | 2h | 2015-03-16 | 2015-03-16 | 0.75d | Vodja projekta; Tajnica | 4h | 35 |
| 2 | 2 | Interni sestanek | manual | 1d? | 2015-03-16 | 2015-03-16 |  |  |  |  |
| 3 | 3 | Priprava pogodbe | manual | 1d? | 2015-03-16 | 2015-03-16 |  |  |  |  |
| 4 | 4 | Podpis pogodbe |  | 1h | 2015-03-16 | 2015-03-16 | 0.88d | Vodja projekta | 1h | 12 |
| 5 | 5 | **Priprava zahtev** |  | 1d? | 2015-03-16 | 2015-03-16 | 0d |  |  |  |
| 6 | 5.1 | Zajem zahtev | manual | 1d? | 2015-03-16 | 2015-03-16 |  |  |  |  |
| 7 | 5.2 | Analiza zahtev | manual | 1d? | 2015-03-16 | 2015-03-16 |  |  |  |  |
| 8 | 5.3 | Izdelava specifikacij | manual | 1d? | 2015-03-16 | 2015-03-16 |  |  |  |  |
| 9 | 5.4 | Sestanek s stranko, usklajevanje specifikacij | manual | 1d? | 2015-03-16 | 2015-03-16 |  |  |  |  |
| 10 | 5.5 | Potrditev zahtev | manual | 1d? | 2015-03-16 | 2015-03-16 |  |  |  |  |
| 11 | 6 | **Analiza nabavnega materiala** |  | 1d? | 2015-03-16 | 2015-03-16 | 0d |  |  |  |
| 12 | 6.1 | Pridobivanje ponudb za senzorje in kamere | manual | 1d? | 2015-03-16 | 2015-03-16 |  |  |  |  |
| 13 | 6.2 | Nabava testnega materiala | manual | 1d? | 2015-03-16 | 2015-03-16 |  |  |  |  |
| 14 | 6.3 | Preizkušanje testnega materiala | manual | 1d? | 2015-03-16 | 2015-03-16 |  |  |  |  |
| 15 | 6.4 | Dokumentiranje preizkušanja testnega materiala | manual | 1d? | 2015-03-16 | 2015-03-16 |  |  |  |  |
| 16 | 7 | **Priprava delovnega okolja** |  | 1d? | 2015-03-16 | 2015-03-16 | 0d |  |  |  |
| 17 | 7.1 | Namestitev strežnika | manual | 1d? | 2015-03-16 | 2015-03-16 |  |  |  |  |
| 18 | 7.2 | Konfiguracija strežnika | manual | 1d? | 2015-03-16 | 2015-03-16 |  |  |  |  |
| 19 | 7.3 | Vzpostavitev RAID 6 diskovnega polja | manual | 1d? | 2015-03-16 | 2015-03-16 |  |  |  |  |
| 20 | 7.4 | Priprava "delavnice" za brezpilotna zračna plovila | manual | 1d? | 2015-03-16 | 2015-03-16 |  |  |  |  |
| 21 | 7.5 | Namestitev delovnih postaj | manual | 1d? | 2015-03-16 | 2015-03-16 |  |  |  |  |
| 22 | 7.6 | Priprava poročila o pripravi delovnega okolja | manual | 1d? | 2015-03-16 | 2015-03-16 |  |  |  |  |
| 23 | 8 | **Vzpostavitev redudančnega delovnega okolja** |  | 1d? | 2015-03-16 | 2015-03-16 | 0d |  |  |  |
| 24 | 8.1 | Analiza zahtev redundančnega delovnega okolja | manual | 1d? | 2015-03-16 | 2015-03-16 |  |  |  |  |
| 25 | 8.2 | Implementacija redundančnega delovnega okolja | manual | 1d? | 2015-03-16 | 2015-03-16 |  |  |  |  |
| 26 | 8.3 | Priprava poročila | manual | 1d? | 2015-03-16 | 2015-03-16 |  |  |  |  |

| ID | WBS | Task | Type | Duration | Start | Finish | Total slack | Constraint |
| --- | --- | --- | --- | --- | --- | --- | --- | --- |
| 27 | 9 | **Vzpostavitev podatkovne baze** |  | 1d? | 2015-03-16 | 2015-03-16 | 0d |  |
| 28 | 9.1 | Analiza zahtev | manual | 1d? | 2015-03-16 | 2015-03-16 |  |  |
| 29 | 9.2 | Izdelava ER diagrama | manual | 1d? | 2015-03-16 | 2015-03-16 |  |  |
| 30 | 9.3 | Modeliranje podatkovne baze | manual | 1d? | 2015-03-16 | 2015-03-16 |  |  |
| 31 | 9.4 | Vzpostavitev podatkovnega strežnika | manual | 1d? | 2015-03-16 | 2015-03-16 |  |  |
| 32 | 9.5 | Implementacija podatkovne baze | manual | 1d? | 2015-03-16 | 2015-03-16 |  |  |
| 33 | 9.6 | Priprava politike arhiviranja in obnovitve podatkovne baze | manual | 1d? | 2015-03-16 | 2015-03-16 |  |  |
| 34 | 9.7 | Priprava poročila | manual | 1d? | 2015-03-16 | 2015-03-16 |  |  |
| 35 | 10 | **Razvoj** |  | 1d? | 2015-03-16 | 2015-03-16 | 0d |  |
| 36 | 10.1 | **Sestanek delovne skupine** |  | 0.25d | 2015-03-16 | 2015-03-16 | 0d |  |
| 37 | 10.1.1 | Sestanek delovne skupine | manual | 2h | 2015-03-16 | 2015-03-16 |  | start no earlier than 2015-03-16 |
| 38 | 10.2 | **Inteligentni sistem** |  | 1d? | 2015-03-16 | 2015-03-16 | 0d |  |
| 39 | 10.2.1 | Načrtovanje inteligentnega sistema | manual | 1d? | 2015-03-16 | 2015-03-16 |  |  |
| 40 | 10.2.2 | Implementacija podatkovne baze | manual | 1d? | 2015-03-16 | 2015-03-16 |  |  |
| 41 | 10.2.3 | Razvoj storitev za dostop in vnos podatkov | manual | 1d? | 2015-03-16 | 2015-03-16 |  |  |
| 42 | 10.2.4 | Implementacija storitev za zajem podatkov (vreme) | manual | 1d? | 2015-03-16 | 2015-03-16 |  |  |
| 43 | 10.2.5 | Razvoj mehanizmov za varovanje podatkov | manual | 1d? | 2015-03-16 | 2015-03-16 |  |  |
| 44 | 10.2.6 | Razvoj nadzora brezpilotnih zračnih plovil | manual | 1d? | 2015-03-16 | 2015-03-16 |  |  |
| 45 | 10.2.7 | Priprava dokumentacije | manual | 1d? | 2015-03-16 | 2015-03-16 |  |  |
| 46 | 10.2.8 | Predstavitev rezultatov iteracije naročniku | manual | 1d? | 2015-03-16 | 2015-03-16 |  |  |
| 47 | 10.2.9 | Ponovna iteracija implementacije | manual | 1d? | 2015-03-16 | 2015-03-16 |  |  |
| 48 | 10.3 | **Modifikacija brezpilotna zračna plovila** |  | 1d? | 2015-03-16 | 2015-03-16 | 0d |  |
| 49 | 10.3.1 | Načrtovanje modifikacije brezpilotnega zračnega plovila | manual | 1d? | 2015-03-16 | 2015-03-16 |  |  |
| 50 | 10.3.2 | Priprava senzorjev in kamere | manual | 1d? | 2015-03-16 | 2015-03-16 |  |  |
| 51 | 10.3.3 | Povezava senzorjev in kamere z inteligentnim sistemom | manual | 1d? | 2015-03-16 | 2015-03-16 |  |  |
| 52 | 10.3.4 | Implementacija modifikacij | manual | 1d? | 2015-03-16 | 2015-03-16 |  |  |
| 53 | 10.3.5 | Razvoj samodejnega upravljanja letenja | manual | 1d? | 2015-03-16 | 2015-03-16 |  |  |
| 54 | 10.3.6 | Priprava dokumentacije | manual | 1d? | 2015-03-16 | 2015-03-16 |  |  |
| 55 | 10.3.7 | Predstavitev rezultatov iteracije naročniku | manual | 1d? | 2015-03-16 | 2015-03-16 |  |  |
| 56 | 10.3.8 | Ponovna iteracija implementacije | manual | 1d? | 2015-03-16 | 2015-03-16 |  |  |

| ID | WBS | Task | Type | Duration | Start | Finish | Total slack |
| --- | --- | --- | --- | --- | --- | --- | --- |
| 57 | 10.4 | **Spletna aplikacija** |  | 1d? | 2015-03-16 | 2015-03-16 | 0d |
| 58 | 10.4.1 | Načrtovanje spletne aplikacije | manual | 1d? | 2015-03-16 | 2015-03-16 |  |
| 59 | 10.4.2 | Izdelava grafične predloge | manual | 1d? | 2015-03-16 | 2015-03-16 |  |
| 60 | 10.4.3 | Implementacija sprehoda v virtualni realnosti | manual | 1d? | 2015-03-16 | 2015-03-16 |  |
| 61 | 10.4.4 | Implementacija sprehoda v načinu 360° panorame | manual | 1d? | 2015-03-16 | 2015-03-16 |  |
| 62 | 10.4.5 | Priprava dokumentacije | manual | 1d? | 2015-03-16 | 2015-03-16 |  |
| 63 | 10.4.6 | Predstavitev rezultatov iteracije naročniku | manual | 1d? | 2015-03-16 | 2015-03-16 |  |
| 64 | 10.4.7 | Ponovna iteracija implementacije | manual | 1d? | 2015-03-16 | 2015-03-16 |  |
| 65 | 10.5 | **Mobilna aplikacija** |  | 1d? | 2015-03-16 | 2015-03-16 | 0d |
| 66 | 10.5.1 | Načrtovanje mobilne aplikacije | manual | 1d? | 2015-03-16 | 2015-03-16 |  |
| 67 | 10.5.2 | Izdelava grafičnega vmesnika | manual | 1d? | 2015-03-16 | 2015-03-16 |  |
| 68 | 10.5.3 | Modeliranje podatkovne baze | manual | 1d? | 2015-03-16 | 2015-03-16 |  |
| 69 | 10.5.4 | Vzpostavitev lokalne podatkovne baze | manual | 1d? | 2015-03-16 | 2015-03-16 |  |
| 70 | 10.5.5 | Implementacija sprehoda v načinu 360° panorame | manual | 1d? | 2015-03-16 | 2015-03-16 |  |
| 71 | 10.5.6 | Implementacija sprehoda v virtualni realnosti | manual | 1d? | 2015-03-16 | 2015-03-16 |  |
| 72 | 10.5.7 | Implementacija vnosa podatkov | manual | 1d? | 2015-03-16 | 2015-03-16 |  |
| 73 | 10.5.8 | Priprava dokumentacije | manual | 1d? | 2015-03-16 | 2015-03-16 |  |
| 74 | 10.5.9 | Predstavitev rezultatov iteracije naročniku | manual | 1d? | 2015-03-16 | 2015-03-16 |  |
| 75 | 10.5.10 | Ponovna iteracija implementacije | manual | 1d? | 2015-03-16 | 2015-03-16 |  |
| 76 | 11 | **Testiranje** |  | 1d? | 2015-03-16 | 2015-03-16 | 0d |
| 77 | 11.1 | **Spletna aplikacija** |  | 1d? | 2015-03-16 | 2015-03-16 | 0d |
| 78 | 11.1.1 | Priprava načrta | manual | 1d? | 2015-03-16 | 2015-03-16 |  |
| 79 | 11.1.2 | Priprava testnih primerov | manual | 1d? | 2015-03-16 | 2015-03-16 |  |
| 80 | 11.1.3 | Testiranje | manual | 1d? | 2015-03-16 | 2015-03-16 |  |
| 81 | 11.1.4 | Poročilo | manual | 1d? | 2015-03-16 | 2015-03-16 |  |
| 82 | 11.1.5 | Priprava dokumentacije | manual | 1d? | 2015-03-16 | 2015-03-16 |  |
| 83 | 11.1.6 | Ponovna iteracija implementacije | manual | 1d? | 2015-03-16 | 2015-03-16 |  |

| ID | WBS | Task | Type | Duration | Start | Finish | Total slack |
| --- | --- | --- | --- | --- | --- | --- | --- |
| 84 | 11.2 | **Inteligentni sistem** |  | 1d? | 2015-03-16 | 2015-03-16 | 0d |
| 85 | 11.2.1 | Priprava načrta | manual | 1d? | 2015-03-16 | 2015-03-16 |  |
| 86 | 11.2.2 | Priprava testnih primerov | manual | 1d? | 2015-03-16 | 2015-03-16 |  |
| 87 | 11.2.3 | Testiranje | manual | 1d? | 2015-03-16 | 2015-03-16 |  |
| 88 | 11.2.4 | Poročilo | manual | 1d? | 2015-03-16 | 2015-03-16 |  |
| 89 | 11.2.5 | Priprava dokumentacije | manual | 1d? | 2015-03-16 | 2015-03-16 |  |
| 90 | 11.2.6 | Ponovna iteracija implementacije | manual | 1d? | 2015-03-16 | 2015-03-16 |  |
| 91 | 11.3 | **Modifikacija brezpilotna zračna plovila** |  | 1d? | 2015-03-16 | 2015-03-16 | 0d |
| 92 | 11.3.1 | Priprava načrta | manual | 1d? | 2015-03-16 | 2015-03-16 |  |
| 93 | 11.3.2 | Priprava testnih primerov | manual | 1d? | 2015-03-16 | 2015-03-16 |  |
| 94 | 11.3.3 | Testiranje | manual | 1d? | 2015-03-16 | 2015-03-16 |  |
| 95 | 11.3.4 | Poročilo | manual | 1d? | 2015-03-16 | 2015-03-16 |  |
| 96 | 11.3.5 | Priprava dokumentacije | manual | 1d? | 2015-03-16 | 2015-03-16 |  |
| 97 | 11.3.6 | Ponovna iteracija implementacije | manual | 1d? | 2015-03-16 | 2015-03-16 |  |
| 98 | 11.4 | **Mobilna aplikacija** |  | 1d? | 2015-03-16 | 2015-03-16 | 0d |
| 99 | 11.4.1 | Priprava načrta | manual | 1d? | 2015-03-16 | 2015-03-16 |  |
| 100 | 11.4.2 | Priprava testnih primerov | manual | 1d? | 2015-03-16 | 2015-03-16 |  |
| 101 | 11.4.3 | Testiranje | manual | 1d? | 2015-03-16 | 2015-03-16 |  |
| 102 | 11.4.4 | Poročilo | manual | 1d? | 2015-03-16 | 2015-03-16 |  |
| 103 | 11.4.5 | Priprava dokumentacije | manual | 1d? | 2015-03-16 | 2015-03-16 |  |
| 104 | 11.4.6 | Ponovna iteracija implementacije | manual | 1d? | 2015-03-16 | 2015-03-16 |  |
| 105 | 12 | Priprava navodil za uporabo | manual | 1d? | 2015-03-16 | 2015-03-16 |  |
| 106 | 13 | Izobraževanje | manual | 1d? | 2015-03-16 | 2015-03-16 |  |
| 107 | 14 | Namestitev pri naročniku | manual | 1d? | 2015-03-16 | 2015-03-16 |  |
